| id | name | work_package | track | quantity | unit | productivity_per_day | duration_days | cost | start_day | finish_day | start_date | finish_date | total_float_days | critical | assumption | predecessors | boq_item_ids |
| --- | --- | --- | --- | --- | --- | --- | --- | --- | --- | --- | --- | --- | --- | --- | --- | --- | --- |
| MOB | Mobilisation and setting out | preliminaries | general | 0.0 | allowance | 0.0 | 2 | 0.0 | 0 | 2 | 2026-04-25 | 2026-04-27 | 0 | True | Published/site productivity default; calibrate before baseline approval |  |  |
| BOR | Recharge borewell drilling and completion | borewell | borewell | 256.0 | mixed | 11.0 | 22 | 0.0 | 2 | 24 | 2026-04-28 | 2026-05-22 | 15 |  | Independent specialist drilling crew | MOB | BOQ-011, BOQ-012, BOQ-014, BOQ-018 |
| T1E | Tank 1: excavation | earthwork | tank | 513.8 | m3 | 120.0 | 5 | 0.0 | 2 | 7 | 2026-04-28 | 2026-05-02 | 0 | True | Published/site productivity default; calibrate before baseline approval | MOB | BOQ-001 |
| T1P | Tank 1: PCC base | pcc | tank | 5.325 | m3 | 25.0 | 1 | 0.0 | 7 | 8 | 2026-05-04 | 2026-05-04 | 0 | True | Published/site productivity default; calibrate before baseline approval | T1E | BOQ-003 |
| T1R | Tank 1: RCC raft, walls and cover | rcc + reinforcement + formwork | tank | 7802.03 | mixed | 400.25 | 21 | 0.0 | 8 | 29 | 2026-05-05 | 2026-05-28 | 6 |  | Shared RCC crew; includes curing/strike allowance | T1P | BOQ-004, BOQ-005, BOQ-006, BOQ-007 |
| T2E | Tank 2: excavation | earthwork | tank | 513.8 | m3 | 120.0 | 5 | 0.0 | 8 | 13 | 2026-05-05 | 2026-05-09 | 0 | True | Published/site productivity default; calibrate before baseline approval | T1P | BOQ-001 |
| T2P | Tank 2: PCC base | pcc | tank | 5.325 | m3 | 25.0 | 1 | 0.0 | 13 | 14 | 2026-05-11 | 2026-05-11 | 0 | True | Published/site productivity default; calibrate before baseline approval | T2E | BOQ-003 |
| T2R | Tank 2: RCC raft, walls and cover | rcc + reinforcement + formwork | tank | 7802.03 | mixed | 400.25 | 21 | 0.0 | 14 | 35 | 2026-05-12 | 2026-06-04 | 0 | True | Shared RCC crew; includes curing/strike allowance | T2P | BOQ-004, BOQ-005, BOQ-006, BOQ-007 |
| T1W | Tank 1: waterproofing | waterproofing | tank | 0.0 | allowance | 0.0 | 2 | 0.0 | 29 | 31 | 2026-05-29 | 2026-05-30 | 6 |  | Published/site productivity default; calibrate before baseline approval | T1R |  |
| T1F | Tank 1: finishes and backfill | finishes + masonry + backfill | tank | 102.76 | m3 | 140.0 | 2 | 0.0 | 31 | 33 | 2026-06-01 | 2026-06-02 | 6 |  | Published/site productivity default; calibrate before baseline approval | T1W | BOQ-002 |
| T2W | Tank 2: waterproofing | waterproofing | tank | 0.0 | allowance | 0.0 | 2 | 0.0 | 35 | 37 | 2026-06-05 | 2026-06-06 | 0 | True | Published/site productivity default; calibrate before baseline approval | T2R |  |
| T2F | Tank 2: finishes and backfill | finishes + masonry + backfill | tank | 102.76 | m3 | 140.0 | 2 | 0.0 | 37 | 39 | 2026-06-08 | 2026-06-09 | 0 | True | Published/site productivity default; calibrate before baseline approval | T2W | BOQ-002 |
| TST | System testing and commissioning | testing + plumbing | general | 64.0 | m | 10.0 | 7 | 0.0 | 39 | 46 | 2026-06-10 | 2026-06-17 | 0 | True | Published/site productivity default; calibrate before baseline approval | T1F, T2F, BOR | BOQ-015 |
| OTH | Unmapped / miscellaneous BOQ work | mixed | general | 167.94 | mixed | 0.0 | 174 | 0.0 | 46 | 220 | 2026-06-18 | 2027-01-06 | 0 | True | Conservative terminal activity; planner must classify or reposition these items | TST | BOQ-008, BOQ-009, BOQ-010, BOQ-013, BOQ-016, BOQ-017 |
| HND | Completion milestone | milestone | general | 0 | milestone | 0 | 0 | 0 | 220 | 220 | 2027-01-07 | 2027-01-07 | 0 | True | All generated work tracks complete | OTH |  |
